# Carta Gantt Proyecto

Schedule from MS Project, 2014-03-10 to 2014-07-07, 3 hours a day, A marks actual dates.

## Calendars

- Estándar: Mon 13:00-15:00, 15:30-18:30; Tue-Sun off. Exceptions (off unless hours are given): 2014-05-21 (Feriado).

## Resources

| Resource |
| --- |
| Samuel Carril |
| Leonardo Contreras |
| Débora Firmani |
| Diego González |
| Sdi |
| D |

## Schedule

| ID | WBS | Task | Type | Duration | Start | Finish | Predecessors | Complete | Remaining | Baseline start | Baseline finish | Baseline duration | Total slack | Free slack | Constraint | Resources | Work | Actual work |
| --- | --- | --- | --- | --- | --- | --- | --- | --- | --- | --- | --- | --- | --- | --- | --- | --- | --- | --- |
| 1 | 1 | Elaboración de la Propuesta |  | 1d | 2014-03-10 15:30 A | 2014-03-10 18:30 |  |  | 1d | 2014-03-10 15:30 | 2014-03-10 18:30 | 1d | 28.33d |  | finish no earlier than 2014-03-17 19:00 | Leonardo Contreras | 3h |  |
| 2 | 2 | **Planificación global** |  | 1d | 2014-03-17 15:30 A | 2014-03-17 18:30 A | 1 | 100% |  | 2014-03-17 15:30 | 2014-03-17 18:30 | 1d |  |  |  |  | 3.3h | 3.3h |
| 3 | 2.1 | Carta Gantt |  | 1d | 2014-03-17 15:30 A | 2014-03-17 18:30 A |  | 100% |  | 2014-03-17 15:30 | 2014-03-17 18:30 | 1d |  |  |  | Leonardo Contreras | 3h | 3h |
| 4 | 2.2 | Ambiente de Ingeniería |  | 0.1d | 2014-03-17 15:30 A | 2014-03-17 15:48 A |  | 100% |  | 2014-03-17 15:30 | 2014-03-17 15:48 | 0.1d |  |  |  | Diego González | 0.3h | 0.3h |
| 5 | 3 | **Requerimientos** |  | 3d | 2014-03-24 09:00 A | 2014-03-31 17:30 | 2 |  | 3d | 2014-03-24 09:00 | 2014-03-31 17:30 | 3d | 23.67d |  |  |  | 9h |  |
| 6 | 3.1 | Definición de Requerimientos |  | 0.5d | 2014-03-24 09:00 A | 2014-03-24 14:30 |  |  | 0.5d | 2014-03-24 09:00 | 2014-03-24 14:30 | 0.5d | 23.67d | 0d |  | Débora Firmani | 1.5h |  |
| 7 | 3.2 | Análisis de Requerimientos |  | 1d | 2014-03-24 14:30 | 2014-03-24 18:00 | 6 |  |  | 2014-03-24 14:30 | 2014-03-24 18:00 | 1d | 23.67d | 0d |  | Débora Firmani | 3h |  |
| 8 | 3.3 | Especificación de Requerimientos |  | 1d | 2014-03-24 18:00 | 2014-03-31 16:00 | 7 |  |  | 2014-03-24 18:00 | 2014-03-31 16:00 | 1d | 23.67d | 0d |  | Débora Firmani | 3h |  |
| 9 | 3.4 | Diagrama de Casos de Uso |  | 0.5d | 2014-03-24 09:00 A | 2014-03-31 17:30 | 8 |  | 0.5d | 2014-03-24 09:00 | 2014-03-31 17:30 | 0.5d | 23.67d |  |  | Débora Firmani | 1.5h |  |
| 10 | 4 | Definir Plan Detallado |  | 1d | 2014-03-31 09:00 A | 2014-03-31 16:30 A | 5 | 100% |  | 2014-03-31 09:00 | 2014-03-31 16:30 | 1d |  |  |  | Leonardo Contreras | 3h | 3h |
| 11 | 5 | **Diseño Global** |  | 1d | 2014-03-31 16:30 | 2014-04-07 14:00 | 10 |  |  | 2014-03-31 16:30 | 2014-04-07 14:00 | 1d | 0d |  |  |  | 4.5h |  |
| 12 | 5.1 | Diseño Físico de Datos |  | 0.5d | 2014-03-31 16:30 | 2014-03-31 18:00 |  |  |  | 2014-03-31 16:30 | 2014-03-31 18:00 | 0.5d | 0.5d |  |  | Débora Firmani | 1.5h |  |
| 13 | 5.2 | Diseño de Arquitectura Sw |  | 0.2d | 2014-03-31 16:30 | 2014-03-31 17:06 |  |  |  | 2014-03-31 16:30 | 2014-03-31 17:06 | 0.2d | 0d |  |  | Samuel Carril | 0.6h |  |
| 14 | 5.3 | Diseño de interfaz |  | 0.8d | 2014-03-31 17:06 | 2014-04-07 14:00 | 13 |  |  | 2014-03-31 17:06 | 2014-04-07 14:00 | 0.8d | 0d |  |  | Samuel Carril | 2.4h |  |
| 15 | 6 | **Primera Versión** |  | 6d | 2014-04-07 14:00 | 2014-04-28 17:30 | 11 |  |  | 2014-04-07 14:00 | 2014-04-28 17:30 | 6d | 0d |  |  |  | 144h |  |
| 16 | 6.1 | **Desarrollo Sprint 1** |  | 4d | 2014-04-07 14:00 | 2014-04-21 16:30 |  |  |  | 2014-04-07 14:00 | 2014-04-21 16:30 | 4d | 0d |  |  | Leonardo Contreras | 24h |  |
| 17 | 6.1.1 | Codificación por módulos |  | 3.5d | 2014-04-07 14:00 | 2014-04-21 14:30 |  |  |  | 2014-04-07 14:00 | 2014-04-21 14:30 | 3.5d | 0d |  |  | Leonardo Contreras | 10.5h |  |
| 18 | 6.1.2 | Integración de módulos |  | 0.5d | 2014-04-21 14:30 | 2014-04-21 16:30 | 17 |  |  | 2014-04-21 14:30 | 2014-04-21 16:30 | 0.5d | 0d |  |  | Leonardo Contreras | 1.5h |  |
| 19 | 6.1.3 | Entrega de la versión | milestone | 0d | 2014-04-21 16:30 | 2014-04-21 16:30 | 18 |  |  | 2014-04-21 16:30 | 2014-04-21 16:30 | 0d | 0d |  |  | Leonardo Contreras |  |  |
| 20 | 6.2 | **Pruebas Sprint 1** |  | 2d | 2014-04-21 16:30 | 2014-04-28 17:30 | 16 |  |  | 2014-04-21 16:30 | 2014-04-28 17:30 | 2d | 0d |  |  | Leonardo Contreras | 12h |  |
| 21 | 6.2.1 | Plan de Pruebas |  | 0.2d | 2014-04-21 16:30 | 2014-04-21 17:06 |  |  |  | 2014-04-21 16:30 | 2014-04-21 17:06 | 0.2d | 0d |  |  | Leonardo Contreras | 0.6h |  |
| 22 | 6.2.2 | Diseño de Pruebas |  | 0.5d | 2014-04-21 17:06 | 2014-04-28 13:06 | 21 |  |  | 2014-04-21 17:06 | 2014-04-28 13:06 | 0.5d | 0d |  |  | Leonardo Contreras | 1.5h |  |
| 23 | 6.2.3 | Realización pruebas |  | 1d | 2014-04-28 13:06 | 2014-04-28 16:36 | 22 |  |  | 2014-04-28 13:06 | 2014-04-28 16:36 | 1d | 0d |  |  | Leonardo Contreras | 3h |  |
| 24 | 6.2.4 | Resultados y conclusiones |  | 0.3d | 2014-04-28 16:36 | 2014-04-28 17:30 | 23 |  |  | 2014-04-28 16:36 | 2014-04-28 17:30 | 0.3d | 0d |  |  | Leonardo Contreras | 0.9h |  |

| ID | WBS | Task | Type | Duration | Start | Finish | Predecessors | Baseline start | Baseline finish | Baseline duration | Total slack | Free slack | Resources | Work |
| --- | --- | --- | --- | --- | --- | --- | --- | --- | --- | --- | --- | --- | --- | --- |
| 25 | 6.3 | **Desarrollo Sprint 2** |  | 4d | 2014-04-07 14:00 | 2014-04-21 16:30 |  | 2014-04-07 14:00 | 2014-04-21 16:30 | 4d | 17d | 0d | Samuel Carril | 24h |
| 26 | 6.3.1 | Codificación por módulos |  | 3.5d | 2014-04-07 14:00 | 2014-04-21 14:30 |  | 2014-04-07 14:00 | 2014-04-21 14:30 | 3.5d | 17d | 0d | Samuel Carril | 10.5h |
| 27 | 6.3.2 | Integración de módulos |  | 0.5d | 2014-04-21 14:30 | 2014-04-21 16:30 | 26 | 2014-04-21 14:30 | 2014-04-21 16:30 | 0.5d | 17d | 0d | Samuel Carril | 1.5h |
| 28 | 6.3.3 | Entrega de la versión | milestone | 0d | 2014-04-21 16:30 | 2014-04-21 16:30 | 27 | 2014-04-21 16:30 | 2014-04-21 16:30 | 0d | 17d |  | Samuel Carril |  |
| 29 | 6.4 | **Pruebas Sprint 2** |  | 2d | 2014-04-21 16:30 | 2014-04-28 17:30 | 25 | 2014-04-21 16:30 | 2014-04-28 17:30 | 2d | 17d |  | Samuel Carril | 12h |
| 30 | 6.4.1 | Plan de Pruebas |  | 0.2d | 2014-04-21 16:30 | 2014-04-21 17:06 |  | 2014-04-21 16:30 | 2014-04-21 17:06 | 0.2d | 17d | 0d | Samuel Carril | 0.6h |
| 31 | 6.4.2 | Diseño de Pruebas |  | 0.5d | 2014-04-21 17:06 | 2014-04-28 13:06 | 30 | 2014-04-21 17:06 | 2014-04-28 13:06 | 0.5d | 17d | 0d | Samuel Carril | 1.5h |
| 32 | 6.4.3 | Realización pruebas |  | 1d | 2014-04-28 13:06 | 2014-04-28 16:36 | 31 | 2014-04-28 13:06 | 2014-04-28 16:36 | 1d | 17d | 0d | Samuel Carril | 3h |
| 33 | 6.4.4 | Resultados y conclusiones |  | 0.3d | 2014-04-28 16:36 | 2014-04-28 17:30 | 32 | 2014-04-28 16:36 | 2014-04-28 17:30 | 0.3d | 17d |  | Samuel Carril | 0.9h |
| 34 | 6.5 | **Desarrollo Sprint 3** |  | 4d | 2014-04-07 14:00 | 2014-04-21 16:30 |  | 2014-04-07 14:00 | 2014-04-21 16:30 | 4d | 17d | 0d | Diego González | 24h |
| 35 | 6.5.1 | Codificación por módulos |  | 3.5d | 2014-04-07 14:00 | 2014-04-21 14:30 |  | 2014-04-07 14:00 | 2014-04-21 14:30 | 3.5d | 17d | 0d | Diego González | 10.5h |
| 36 | 6.5.2 | Integración de módulos |  | 0.5d | 2014-04-21 14:30 | 2014-04-21 16:30 | 35 | 2014-04-21 14:30 | 2014-04-21 16:30 | 0.5d | 17d | 0d | Diego González | 1.5h |
| 37 | 6.5.3 | Entrega de la versión | milestone | 0d | 2014-04-21 16:30 | 2014-04-21 16:30 | 36 | 2014-04-21 16:30 | 2014-04-21 16:30 | 0d | 17d |  | Diego González |  |
| 38 | 6.6 | **Pruebas Sprint 3** |  | 2d | 2014-04-21 16:30 | 2014-04-28 17:30 | 34 | 2014-04-21 16:30 | 2014-04-28 17:30 | 2d | 17d |  | Diego González | 12h |
| 39 | 6.6.1 | Plan de Pruebas |  | 0.2d | 2014-04-21 16:30 | 2014-04-21 17:06 |  | 2014-04-21 16:30 | 2014-04-21 17:06 | 0.2d | 17d | 0d | Diego González | 0.6h |
| 40 | 6.6.2 | Diseño de Pruebas |  | 0.5d | 2014-04-21 17:06 | 2014-04-28 13:06 | 39 | 2014-04-21 17:06 | 2014-04-28 13:06 | 0.5d | 17d | 0d | Diego González | 1.5h |
| 41 | 6.6.3 | Realización pruebas |  | 1d | 2014-04-28 13:06 | 2014-04-28 16:36 | 40 | 2014-04-28 13:06 | 2014-04-28 16:36 | 1d | 17d | 0d | Diego González | 3h |
| 42 | 6.6.4 | Resultados y conclusiones |  | 0.3d | 2014-04-28 16:36 | 2014-04-28 17:30 | 41 | 2014-04-28 16:36 | 2014-04-28 17:30 | 0.3d | 17d |  | Diego González | 0.9h |
| 43 | 6.7 | **Desarrollo Sprint 4** |  | 4d | 2014-04-07 14:00 | 2014-04-21 16:30 |  | 2014-04-07 14:00 | 2014-04-21 16:30 | 4d | 17d | 0d | Débora Firmani | 24h |
| 44 | 6.7.1 | Codificación por módulos |  | 3.5d | 2014-04-07 14:00 | 2014-04-21 14:30 |  | 2014-04-07 14:00 | 2014-04-21 14:30 | 3.5d | 17d | 0d | Débora Firmani | 10.5h |
| 45 | 6.7.2 | Integración de módulos |  | 0.5d | 2014-04-21 14:30 | 2014-04-21 16:30 | 44 | 2014-04-21 14:30 | 2014-04-21 16:30 | 0.5d | 17d | 0d | Débora Firmani | 1.5h |
| 46 | 6.7.3 | Entrega de la versión | milestone | 0d | 2014-04-21 16:30 | 2014-04-21 16:30 | 45 | 2014-04-21 16:30 | 2014-04-21 16:30 | 0d | 17d |  | Débora Firmani |  |
| 47 | 6.8 | **Pruebas Sprint 4** |  | 2d | 2014-04-21 16:30 | 2014-04-28 17:30 | 43 | 2014-04-21 16:30 | 2014-04-28 17:30 | 2d | 17d |  | Débora Firmani | 12h |
| 48 | 6.8.1 | Plan de Pruebas |  | 0.2d | 2014-04-21 16:30 | 2014-04-21 17:06 |  | 2014-04-21 16:30 | 2014-04-21 17:06 | 0.2d | 17d | 0d | Débora Firmani | 0.6h |
| 49 | 6.8.2 | Diseño de Pruebas |  | 0.5d | 2014-04-21 17:06 | 2014-04-28 13:06 | 48 | 2014-04-21 17:06 | 2014-04-28 13:06 | 0.5d | 17d | 0d | Débora Firmani | 1.5h |
| 50 | 6.8.3 | Realización pruebas |  | 1d | 2014-04-28 13:06 | 2014-04-28 16:36 | 49 | 2014-04-28 13:06 | 2014-04-28 16:36 | 1d | 17d | 0d | Débora Firmani | 3h |
| 51 | 6.8.4 | Resultados y conclusiones |  | 0.3d | 2014-04-28 16:36 | 2014-04-28 17:30 | 50 | 2014-04-28 16:36 | 2014-04-28 17:30 | 0.3d | 17d |  | Débora Firmani | 0.9h |
| 52 | 7 | Control |  | 1d | 2014-04-28 17:30 | 2014-05-05 15:00 | 20 | 2014-04-28 17:30 | 2014-05-05 15:00 | 1d | 0d |  | Leonardo Contreras | 3h |

| ID | WBS | Task | Type | Duration | Start | Finish | Predecessors | Baseline start | Baseline finish | Baseline duration | Total slack | Free slack | Resources | Work |
| --- | --- | --- | --- | --- | --- | --- | --- | --- | --- | --- | --- | --- | --- | --- |
| 53 | 8 | **Segunda Versión** |  | 9d | 2014-05-05 15:30 | 2014-06-09 17:30 | 52 | 2014-05-05 15:30 | 2014-06-09 17:30 | 9d | 0d |  |  | 216h |
| 54 | 8.1 | **Desarrollo Sprint 5** |  | 6d | 2014-05-05 15:30 | 2014-05-26 18:30 |  | 2014-05-05 15:30 | 2014-05-26 18:30 | 6d | 0d |  | Leonardo Contreras | 36h |
| 55 | 8.1.1 | Codificación por módulos |  | 5d | 2014-05-05 15:30 | 2014-05-26 15:00 |  | 2014-05-05 15:30 | 2014-05-26 15:00 | 5d | 0d |  | Leonardo Contreras | 15h |
| 56 | 8.1.2 | Integración de módulos |  | 1d | 2014-05-26 15:30 | 2014-05-26 18:30 | 55 | 2014-05-26 15:30 | 2014-05-26 18:30 | 1d | 0d |  | Leonardo Contreras | 3h |
| 57 | 8.1.3 | Entrega de la versión | milestone | 0d | 2014-05-26 18:30 | 2014-05-26 18:30 | 56 | 2014-05-26 18:30 | 2014-05-26 18:30 | 0d | 0d |  | Leonardo Contreras |  |
| 58 | 8.2 | **Pruebas Sprint 5** |  | 3d | 2014-06-02 13:00 | 2014-06-09 17:30 | 54 | 2014-06-02 13:00 | 2014-06-09 17:30 | 3d | 0d |  | Leonardo Contreras | 18h |
| 59 | 8.2.1 | Plan de Pruebas |  | 0.2d | 2014-06-02 13:00 | 2014-06-02 13:36 |  | 2014-06-02 13:00 | 2014-06-02 13:36 | 0.2d | 0d |  | Leonardo Contreras | 0.6h |
| 60 | 8.2.2 | Diseño de Pruebas |  | 0.5d | 2014-06-02 13:36 | 2014-06-02 15:36 | 59 | 2014-06-02 13:36 | 2014-06-02 15:36 | 0.5d | 0d |  | Leonardo Contreras | 1.5h |
| 61 | 8.2.3 | Realización pruebas |  | 2d | 2014-06-02 15:36 | 2014-06-09 16:36 | 60 | 2014-06-02 15:36 | 2014-06-09 16:36 | 2d | 0d |  | Leonardo Contreras | 6h |
| 62 | 8.2.4 | Resultados y conclusiones |  | 0.3d | 2014-06-09 16:36 | 2014-06-09 17:30 | 61 | 2014-06-09 16:36 | 2014-06-09 17:30 | 0.3d | 0d |  | Leonardo Contreras | 0.9h |
| 63 | 8.3 | **Desarrollo Sprint 6** |  | 6d | 2014-05-05 15:30 | 2014-05-26 18:30 |  | 2014-05-05 15:30 | 2014-05-26 18:30 | 6d | 7d | 0d | Samuel Carril | 36h |
| 64 | 8.3.1 | Codificación por módulos |  | 5d | 2014-05-05 15:30 | 2014-05-26 15:00 |  | 2014-05-05 15:30 | 2014-05-26 15:00 | 5d | 7d | 0d | Samuel Carril | 15h |
| 65 | 8.3.2 | Integración de módulos |  | 1d | 2014-05-26 15:30 | 2014-05-26 18:30 | 64 | 2014-05-26 15:30 | 2014-05-26 18:30 | 1d | 7d | 0d | Samuel Carril | 3h |
| 66 | 8.3.3 | Entrega de la versión | milestone | 0d | 2014-05-26 18:30 | 2014-05-26 18:30 | 65 | 2014-05-26 18:30 | 2014-05-26 18:30 | 0d | 7d |  | Samuel Carril |  |
| 67 | 8.4 | **Pruebas Sprint 6** |  | 3d | 2014-06-02 13:00 | 2014-06-09 17:30 | 63 | 2014-06-02 13:00 | 2014-06-09 17:30 | 3d | 7d |  | Samuel Carril | 18h |
| 68 | 8.4.1 | Plan de Pruebas |  | 0.2d | 2014-06-02 13:00 | 2014-06-02 13:36 |  | 2014-06-02 13:00 | 2014-06-02 13:36 | 0.2d | 7d | 0d | Samuel Carril | 0.6h |
| 69 | 8.4.2 | Diseño de Pruebas |  | 0.5d | 2014-06-02 13:36 | 2014-06-02 15:36 | 68 | 2014-06-02 13:36 | 2014-06-02 15:36 | 0.5d | 7d | 0d | Samuel Carril | 1.5h |
| 70 | 8.4.3 | Realización pruebas |  | 2d | 2014-06-02 15:36 | 2014-06-09 16:36 | 69 | 2014-06-02 15:36 | 2014-06-09 16:36 | 2d | 7d | 0d | Samuel Carril | 6h |
| 71 | 8.4.4 | Resultados y conclusiones |  | 0.3d | 2014-06-09 16:36 | 2014-06-09 17:30 | 70 | 2014-06-09 16:36 | 2014-06-09 17:30 | 0.3d | 7d |  | Samuel Carril | 0.9h |
| 72 | 8.5 | **Desarrollo Sprint 7** |  | 6d | 2014-05-05 15:30 | 2014-05-26 18:30 |  | 2014-05-05 15:30 | 2014-05-26 18:30 | 6d | 7d | 0d | Diego González | 36h |
| 73 | 8.5.1 | Codificación por módulos |  | 5d | 2014-05-05 15:30 | 2014-05-26 15:00 |  | 2014-05-05 15:30 | 2014-05-26 15:00 | 5d | 7d | 0d | Diego González | 15h |
| 74 | 8.5.2 | Integración de módulos |  | 1d | 2014-05-26 15:30 | 2014-05-26 18:30 | 73 | 2014-05-26 15:30 | 2014-05-26 18:30 | 1d | 7d | 0d | Diego González | 3h |
| 75 | 8.5.3 | Entrega de la versión | milestone | 0d | 2014-05-26 18:30 | 2014-05-26 18:30 | 74 | 2014-05-26 18:30 | 2014-05-26 18:30 | 0d | 7d |  | Diego González |  |
| 76 | 8.6 | **Pruebas Sprint 7** |  | 3d | 2014-06-02 13:00 | 2014-06-09 17:30 | 72 | 2014-06-02 13:00 | 2014-06-09 17:30 | 3d | 7d |  | Diego González | 18h |
| 77 | 8.6.1 | Plan de Pruebas |  | 0.2d | 2014-06-02 13:00 | 2014-06-02 13:36 |  | 2014-06-02 13:00 | 2014-06-02 13:36 | 0.2d | 7d | 0d | Diego González | 0.6h |
| 78 | 8.6.2 | Diseño de Pruebas |  | 0.5d | 2014-06-02 13:36 | 2014-06-02 15:36 | 77 | 2014-06-02 13:36 | 2014-06-02 15:36 | 0.5d | 7d | 0d | Diego González | 1.5h |
| 79 | 8.6.3 | Realización pruebas |  | 2d | 2014-06-02 15:36 | 2014-06-09 16:36 | 78 | 2014-06-02 15:36 | 2014-06-09 16:36 | 2d | 7d | 0d | Diego González | 6h |
| 80 | 8.6.4 | Resultados y conclusiones |  | 0.3d | 2014-06-09 16:36 | 2014-06-09 17:30 | 79 | 2014-06-09 16:36 | 2014-06-09 17:30 | 0.3d | 7d |  | Diego González | 0.9h |

| ID | WBS | Task | Type | Duration | Start | Finish | Predecessors | Baseline start | Baseline finish | Baseline duration | Total slack | Free slack | Resources | Work |
| --- | --- | --- | --- | --- | --- | --- | --- | --- | --- | --- | --- | --- | --- | --- |
| 81 | 8.7 | **Desarrollo Sprint 8** |  | 6d | 2014-05-05 15:30 | 2014-05-26 18:30 |  | 2014-05-05 15:30 | 2014-05-26 18:30 | 6d | 7d | 0d | Débora Firmani | 36h |
| 82 | 8.7.1 | Codificación por módulos |  | 5d | 2014-05-05 15:30 | 2014-05-26 15:00 |  | 2014-05-05 15:30 | 2014-05-26 15:00 | 5d | 7d | 0d | Débora Firmani | 15h |
| 83 | 8.7.2 | Integración de módulos |  | 1d | 2014-05-26 15:30 | 2014-05-26 18:30 | 82 | 2014-05-26 15:30 | 2014-05-26 18:30 | 1d | 7d | 0d | Débora Firmani | 3h |
| 84 | 8.7.3 | Entrega de la versión | milestone | 0d | 2014-05-26 18:30 | 2014-05-26 18:30 | 83 | 2014-05-26 18:30 | 2014-05-26 18:30 | 0d | 7d |  | Débora Firmani |  |
| 85 | 8.8 | **Pruebas Sprint 8** |  | 3d | 2014-06-02 13:00 | 2014-06-09 17:30 | 81 | 2014-06-02 13:00 | 2014-06-09 17:30 | 3d | 7d |  | Débora Firmani | 18h |
| 86 | 8.8.1 | Plan de Pruebas |  | 0.2d | 2014-06-02 13:00 | 2014-06-02 13:36 |  | 2014-06-02 13:00 | 2014-06-02 13:36 | 0.2d | 7d | 0d | Débora Firmani | 0.6h |
| 87 | 8.8.2 | Diseño de Pruebas |  | 0.5d | 2014-06-02 13:36 | 2014-06-02 15:36 | 86 | 2014-06-02 13:36 | 2014-06-02 15:36 | 0.5d | 7d | 0d | Débora Firmani | 1.5h |
| 88 | 8.8.3 | Realización pruebas |  | 2d | 2014-06-02 15:36 | 2014-06-09 16:36 | 87 | 2014-06-02 15:36 | 2014-06-09 16:36 | 2d | 7d | 0d | Débora Firmani | 6h |
| 89 | 8.8.4 | Resultados y conclusiones |  | 0.3d | 2014-06-09 16:36 | 2014-06-09 17:30 | 88 | 2014-06-09 16:36 | 2014-06-09 17:30 | 0.3d | 7d |  | Débora Firmani | 0.9h |
| 90 | 9 | Control |  | 1d | 2014-06-09 17:30 | 2014-06-16 15:00 | 62 | 2014-06-09 17:30 | 2014-06-16 15:00 | 1d | 0d |  | Leonardo Contreras | 3h |
| 91 | 10 | Integración de versiones |  | 2d | 2014-06-16 15:30 | 2014-06-23 16:30 | 90 | 2014-06-16 15:30 | 2014-06-23 16:30 | 2d | 0d |  | Samuel Carril | 6h |
| 92 | 11 | Pruebas Sistema |  | 1d | 2014-06-23 16:30 | 2014-06-30 14:00 | 91 | 2014-06-23 16:30 | 2014-06-30 14:00 | 1d | 0d |  | Diego González | 3h |
| 93 | 12 | Documentación |  | 3d | 2014-06-30 14:00 | 2014-07-07 18:30 | 92 | 2014-06-30 14:00 | 2014-07-07 18:30 | 3d | 0d |  | Diego González | 9h |
| 94 | 13 | Entrega final | milestone | 0d | 2014-07-07 18:30 | 2014-07-07 18:30 | 93 | 2014-07-07 18:30 | 2014-07-07 18:30 | 0d | 0d |  | Leonardo Contreras |  |
